# WBS_ANKAR (1)

How a schedule from MS Project changed from version to version. A marks actual dates.

## Version 1 (saved 2017-07-02)

Note of the change: Archivo de seguimiento de fechas.

| ID | WBS | Task | Duration | Start | Finish | Predecessors | Total float | Constraint |
| --- | --- | --- | --- | --- | --- | --- | --- | --- |
| 1 | 1 | **1. Plan Preliminar** | 2d | 2017-05-08 09:00 | 2017-05-09 19:00 |  |  |  |
| 2 |  | 1.1 Generar un WBS del Producto Inicial | 1d | 2017-05-08 09:00 | 2017-05-08 19:00 |  | 0.3d |  |
| 3 |  | 1.2 Generar Project Charter | 0.3d | 2017-05-09 09:00 | 2017-05-09 11:24 | 2 | 0.3d |  |
| 4 |  | 1.3 Plan de Proyecto Preliminar | 0.4d | 2017-05-09 11:24 | 2017-05-09 16:36 | 3 | 0.3d |  |
| 5 |  | 1.4 Generar Matriz de Responsabilidades | 0.3d | 2017-05-09 09:00 | 2017-05-09 11:24 | 2 | 0.7d |  |
| 6 | 2 | **2. Sitio web ANKAR** | 55d | 2017-05-10 09:00 | 2017-08-11 19:00 | 1 |  |  |
| 7 |  | 2.1 Formación del Equipo de Desarrollo | 0.1d | 2017-05-10 09:00 | 2017-05-10 09:48 |  | 54.9d |  |
| 8 | 2.2 | **2.2 Especificación de Requerimientos** | 7d | 2017-05-10 09:00 | 2017-05-19 19:00 |  |  |  |
| 9 | 2.2.1 | **2.2.1 Elicitación** | 3d | 2017-05-10 09:00 | 2017-05-12 19:00 |  |  |  |
| 10 |  | 2.2.1.1 Generar listas de proveedores | 0.5d | 2017-05-10 09:00 | 2017-05-10 13:00 |  | 3d |  |
| 11 |  | 2.2.1.2 Evaluar los proveedores de requerimientos a entrevistar | 0.25d | 2017-05-10 15:00 | 2017-05-10 17:00 | 10 | 3d |  |
| 12 |  | 2.2.1.3 Definir la estrategia de recolección de requerimientos | 0.25d | 2017-05-10 17:00 | 2017-05-10 19:00 | 11 | 3d |  |
| 13 |  | 2.2.1.4 Planificar reuniones de elicitación de requerimientos | 0.25d | 2017-05-11 09:00 | 2017-05-11 11:00 | 12 | 3d |  |
| 14 |  | 2.2.1.5 Identificar los procesos del sistema | 1d | 2017-05-11 11:00 | 2017-05-12 11:00 | 13 | 3d |  |
| 15 |  | 2.2.1.6 Identificar los requerimientos funcionales | 0.5d | 2017-05-12 11:00 | 2017-05-12 17:00 | 14 | 3d |  |
| 16 |  | 2.2.1.7 Indenticiar los requerimientos no funcionales | 0.25d | 2017-05-12 17:00 | 2017-05-12 19:00 | 15 | 3d |  |
| 17 | 2.2.2 | **2.2.2 Especificación** | 1d | 2017-05-16 09:00 | 2017-05-16 19:00 | 9 |  |  |
| 18 |  | 2.2.2.1 Describir los requerimientos | 0.3d | 2017-05-16 09:00 | 2017-05-16 11:24 |  | 3d |  |
| 19 |  | 2.2.2.2 Evaluar los requerimientos | 0.3d | 2017-05-16 11:24 | 2017-05-16 15:48 | 18 | 3d |  |
| 20 |  | 2.2.2.3 SRS | 0.4d | 2017-05-16 15:48 | 2017-05-16 19:00 | 19 | 3d |  |
| 21 | 2.2.3 | **2.2.3 Gestión** | 2.5d | 2017-05-17 09:00 | 2017-05-19 13:00 | 17 |  |  |
| 22 |  | 2.2.3.1 Prioizar requerimientos | 0.5d | 2017-05-17 09:00 | 2017-05-17 13:00 |  | 3d |  |
| 23 |  | 2.2.3.2 Almacenar en repositorio | 0.25d | 2017-05-17 15:00 | 2017-05-17 17:00 | 22 | 3d |  |
| 24 |  | 2.2.3.3 Asigar a desarrolladores de software | 0.5d | 2017-05-17 17:00 | 2017-05-18 11:00 | 23 | 3d |  |
| 25 |  | 2.2.3.4 Administrar los cambios en los requerimientos | 0.5d | 2017-05-18 11:00 | 2017-05-18 17:00 | 24 | 3d |  |
| 26 |  | 2.2.3.5 Administrar la trazabilidad de los requerimientos | 0.75d | 2017-05-18 17:00 | 2017-05-19 13:00 | 25 | 3d |  |
| 27 |  | 2.2.4 Calificar V & V de requerimientos | 0.25d | 2017-05-19 15:00 | 2017-05-19 17:00 | 26 | 3d |  |
| 28 |  | 2.2.5 Hitos de especificación de requerimientos | 0.25d | 2017-05-19 17:00 | 2017-05-19 19:00 | 27 | 3d |  |
| 29 | 2.3 | **2.3 Planificación** | 11d | 2017-05-22 09:00 | 2017-06-05 19:00 | 8 |  |  |
| 30 |  | 2.3.1 Definición del ciclo de vida | 0.25d | 2017-05-22 09:00 | 2017-05-22 11:00 |  | 10.75d |  |
| 31 |  | 2.3.2 Politicas del proyecto | 0.75d | 2017-05-22 09:00 | 2017-05-22 17:00 |  | 10.25d |  |
| 32 |  | 2.3.3 Actualizar plan de proyecto | 2d | 2017-05-23 09:00 | 2017-05-24 19:00 |  | 45d | start no earlier than 2017-05-23 09:00 |
| 33 | 2.3.4 | **2.3.4 Estimación** | 3d | 2017-05-25 09:00 | 2017-05-29 19:00 |  |  |  |
| 34 |  | 2.3.4.1 Actualizar WBS/Calendario | 0.5d | 2017-05-25 09:00 | 2017-05-25 13:00 |  | 6.75d |  |
| 35 |  | 2.3.4.2 Diccionario del WBS | 1.25d | 2017-05-25 09:00 | 2017-05-26 11:00 |  | 4.75d |  |
| 36 |  | 2.3.4.5 Costos | 1.25d | 2017-05-26 11:00 | 2017-05-29 13:00 | 35 | 4.75d |  |
| 37 | 2.3.5 | **2.3.5 Riesgos** | 2.5d | 2017-05-30 09:00 | 2017-06-01 13:00 | 33 |  |  |
| 38 |  | 2.3.5.1 Identificación de riesgos | 0.75d | 2017-05-30 09:00 | 2017-05-30 17:00 |  | 4.25d |  |
| 39 |  | 2.3.5.2 Asignación de prioridades | 0.75d | 2017-05-30 09:00 | 2017-05-30 17:00 |  | 4.25d |  |
| 40 |  | 2.3.5.3 Plan de mitigación y contingencia | 1d | 2017-05-31 09:00 | 2017-05-31 19:00 |  | 40d | start no earlier than 2017-05-31 09:00 |
| 41 | 2.3.6 | **2.3.6 Aseguramientos de la calidad** | 2.25d | 2017-06-01 09:00 | 2017-06-05 11:00 |  |  |  |
| 42 |  | 2.3.6.1 Plan de la gestion de la configuración | 2d | 2017-06-01 09:00 | 2017-06-02 19:00 |  | 0.5d |  |
| 43 |  | 2.3.6.2 Junta de arranque de construcción | 0.25d | 2017-06-05 09:00 | 2017-06-05 11:00 | 42 | 0.5d |  |
| 44 |  | 2.3.7 Hitos de especificación de requerimientos | 0.25d | 2017-06-05 11:00 | 2017-06-05 13:00 | 43 | 0.5d |  |
| 45 | 2.4 | **2.4 Diseño Preliminar** | 14d | 2017-06-06 09:00 | 2017-06-26 19:00 | 29 |  |  |
| 46 |  | 2.4.1 Definición de la arquitectura | 0.25d | 2017-06-06 09:00 | 2017-06-06 11:00 |  | 14.25d |  |
| 47 | 2.4.2 | **2.4.2 Diagramas UML** | 8d | 2017-06-06 09:00 | 2017-06-15 19:00 |  |  |  |
| 48 |  | 2.4.2.1 Diagrama de secuencia | 2d | 2017-06-06 09:00 | 2017-06-07 19:00 |  | 5.5d |  |
| 49 |  | 2.4.2.2 Diagrama de clases | 2d | 2017-06-08 09:00 | 2017-06-09 19:00 | 48 | 5.5d |  |
| 50 |  | 2.4.2.3 Diagrama de componentes | 0.5d | 2017-06-12 09:00 | 2017-06-12 13:00 | 49 | 5.5d |  |
| 51 |  | 2.4.2.4 Diagrama de despliegue | 0.5d | 2017-06-12 09:00 | 2017-06-12 13:00 |  | 32.5d | start no earlier than 2017-06-12 09:00 |
| 52 |  | 2.4.3 Mapa de navegación | 0.25d | 2017-06-13 09:00 | 2017-06-13 11:00 |  | 31.75d | start no earlier than 2017-06-13 09:00 |
| 53 |  | 2.4.4 Maquetación /Bocetos | 2.75d | 2017-06-13 09:00 | 2017-06-15 17:00 |  | 29.25d | start no earlier than 2017-06-13 09:00 |
| 54 | 2.4.5 | **2.4.5 Base de datos** | 5d | 2017-06-16 09:00 | 2017-06-23 19:00 | 47 |  |  |
| 55 |  | 2.4.5.1 Diagrama E-R | 2d | 2017-06-16 09:00 | 2017-06-20 19:00 |  | 2d |  |
| 56 |  | 2.4.5.2 Diagrama relacional | 2d | 2017-06-21 09:00 | 2017-06-22 19:00 | 55 | 2d |  |
| 57 |  | 2.4.5.3 Diccionario de datos | 0.5d | 2017-06-23 09:00 | 2017-06-23 13:00 | 56 | 2d |  |
| 58 |  | 2.4.5.4 Verificación | 0.5d | 2017-06-23 09:00 | 2017-06-23 13:00 |  | 24.5d | start no earlier than 2017-06-23 09:00 |
| 59 |  | 2.4.6 Integracion de V&V | 0.5d | 2017-06-26 09:00 | 2017-06-26 13:00 |  | 23.5d | start no earlier than 2017-06-26 09:00 |
| 60 |  | 2.4.7 Hitos del diseño peliminar | 0.25d | 2017-06-26 09:00 | 2017-06-26 11:00 |  | 23.75d | start no earlier than 2017-06-26 09:00 |
| 61 | 2.5 | **2.5 Diseño detallado** | 3d | 2017-06-27 09:00 | 2017-06-29 19:00 | 45 |  |  |
| 62 |  | 2.5.1 Refinamiento del diseño | 2d | 2017-06-27 09:00 | 2017-06-28 19:00 |  | 0.5d |  |
| 63 |  | 2.5.2 Pruebas unitarias o de unidad | 0.75d | 2017-06-29 09:00 | 2017-06-29 17:00 | 62 | 0.5d |  |
| 64 |  | 2.5.3 Hitos del diseño detallado | 0.25d | 2017-06-29 09:00 | 2017-06-29 11:00 |  | 20.75d | start no earlier than 2017-06-29 09:00 |
| 65 | 2.6 | **2.6 Codificación** | 15d | 2017-06-30 09:00 | 2017-08-04 19:00 | 61 |  |  |
| 66 |  | 2.6.1 Codificación de la base de datos | 1.75d | 2017-06-30 09:00 | 2017-07-03 17:00 |  | 0.25d |  |
| 67 | 2.6.2 | **2.6.2 Codificar FrontEnd** | 4d | 2017-07-05 09:00 | 2017-07-10 19:00 | 66 |  |  |
| 68 | 2.6.2.1 | **2.6.2.1 Pantalla de inicio** | 0.25d | 2017-07-05 09:00 | 2017-07-05 11:00 |  |  |  |
| 69 |  | 2.6.2.1.1 Vista/Interfaz | 0.25d | 2017-07-05 09:00 | 2017-07-05 11:00 |  | 3.75d |  |
| 70 | 2.6.2.2 | **2.6.2.2 Pantalla de conócenos** | 0.25d | 2017-07-05 09:00 | 2017-07-05 11:00 |  | 3.75d |  |

| ID | WBS | Task | Duration | Start | Finish | Predecessors | Total float | Constraint |
| --- | --- | --- | --- | --- | --- | --- | --- | --- |
| 71 |  | 2.6.2.2.1 Vista/Interfaz | 0.25d | 2017-07-05 09:00 | 2017-07-05 11:00 |  | 3.75d |  |
| 72 | 2.6.2.3 | **2.6.2.3 Pantalla de novedades** | 0.5d | 2017-07-05 09:00 | 2017-07-05 13:00 |  | 3.5d |  |
| 73 |  | 2.6.2.3.1 Vista/Interfaz | 0.5d | 2017-07-05 09:00 | 2017-07-05 13:00 |  | 3.5d |  |
| 74 | 2.6.2.4 | **2.6.2.4 Pantalla de productos** | 1d | 2017-07-06 09:00 | 2017-07-06 19:00 |  | 2d |  |
| 75 |  | 2.6.2.4.1 Vista/Interfaz | 1d | 2017-07-06 09:00 | 2017-07-06 19:00 |  | 2d | start no earlier than 2017-07-06 09:00 |
| 76 | 2.6.2.5 | **2.6.2.5 Pantalla de login** | 0.25d | 2017-07-07 09:00 | 2017-07-07 11:00 |  | 1.75d |  |
| 77 |  | 2.6.2.5.1 Vista/Interfaz | 0.25d | 2017-07-07 09:00 | 2017-07-07 11:00 |  | 1.75d | start no earlier than 2017-07-07 09:00 |
| 78 | 2.6.2.6 | **2.6.2.6 Pantalla de carrito de compras** | 1d | 2017-07-07 09:00 | 2017-07-07 19:00 |  | 1d |  |
| 79 |  | 2.6.2.6.1 Vista/Interfaz | 1d | 2017-07-07 09:00 | 2017-07-07 19:00 |  | 1d | start no earlier than 2017-07-07 09:00 |
| 80 | 2.6.2.7 | **2.6.2.7 Pantalla de comentarios** | 0.5d | 2017-07-10 09:00 | 2017-07-10 13:00 |  | 0.5d |  |
| 81 |  | 2.6.2.7.1 Vista/Interfaz | 0.5d | 2017-07-10 09:00 | 2017-07-10 13:00 |  | 0.5d | start no earlier than 2017-07-10 09:00 |
| 82 | 2.6.2.8 | **2.6.2.8 Pantalla de FAQ** | 0.25d | 2017-07-10 09:00 | 2017-07-10 11:00 |  | 0.75d |  |
| 83 |  | 2.6.2.8.1 Vista/Interfaz | 0.25d | 2017-07-10 09:00 | 2017-07-10 11:00 |  | 0.75d | start no earlier than 2017-07-10 09:00 |
| 84 | 2.6.3 | **2.6.3 Codificar BackEnd (Cpanel)** | 8d | 2017-07-11 09:00 | 2017-08-03 19:00 | 67 |  |  |
| 85 | 2.6.3.1 | **2.6.3.1 Módulo de usuarios** | 2d | 2017-07-11 09:00 | 2017-07-12 19:00 |  |  |  |
| 86 |  | 2.6.3.1.1 Clases de usuario | 1d | 2017-07-11 09:00 | 2017-07-11 19:00 |  | 4d |  |
| 87 |  | 2.6.3.1.2 Controlador | 0.75d | 2017-07-12 09:00 | 2017-07-12 17:00 | 86 | 4d |  |
| 88 |  | 2.6.3.1.3 Vista/Interfaz | 0.25d | 2017-07-12 17:00 | 2017-07-12 19:00 | 87 | 4d |  |
| 89 | 2.6.3.2 | **2.6.3.2 Módulo de novedades** | 1d | 2017-07-13 09:00 | 2017-07-13 19:00 |  |  |  |
| 90 |  | 2.6.3.2.1 Clases de novedades | 0.5d | 2017-07-13 09:00 | 2017-07-13 13:00 |  | 7d |  |
| 91 |  | 2.6.3.2.2 Controlador | 0.25d | 2017-07-13 15:00 | 2017-07-13 17:00 | 90 | 7d |  |
| 92 |  | 2.6.3.2.3 Vista/Interfaz | 0.25d | 2017-07-13 17:00 | 2017-07-13 19:00 | 91 | 7d |  |
| 93 | 2.6.3.3 | **2.6.3.3 Módulo de productos** | 3d | 2017-07-14 09:00 | 2017-08-01 19:00 | 85 |  |  |
| 94 |  | 2.6.3.3.1 Clases de producto | 1d | 2017-07-14 09:00 | 2017-07-14 19:00 |  | 3d |  |
| 95 |  | 2.6.3.3.2 Controlador | 1d | 2017-07-31 09:00 | 2017-07-31 19:00 | 94 | 3d |  |
| 96 |  | 2.6.3.3.3 Vista/Interfaz | 0.25d | 2017-08-01 09:00 | 2017-08-01 11:00 | 95 | 3d |  |
| 97 |  | 2.6.3.3.4 Reporte | 0.75d | 2017-08-01 11:00 | 2017-08-01 19:00 | 96 | 3d |  |
| 98 | 2.6.3.4 | **2.6.3.4 Módulo de compras** | 1d | 2017-08-02 09:00 | 2017-08-02 19:00 | 93 |  |  |
| 99 |  | 2.6.3.4.1 Controlador | 0.75d | 2017-08-02 09:00 | 2017-08-02 17:00 |  | 3d |  |
| 100 |  | 2.6.3.4.2 Vista/Interfaz | 0.25d | 2017-08-02 17:00 | 2017-08-02 19:00 | 99 | 3d |  |
| 101 | 2.6.3.5 | **2.6.3.5 Módulo de comentarios** | 0.5d | 2017-08-03 09:00 | 2017-08-03 13:00 |  |  |  |
| 102 |  | 2.6.3.5.1 Contrlador | 0.25d | 2017-08-03 09:00 | 2017-08-03 11:00 |  | 2.5d |  |
| 103 |  | 2.6.3.5.2 Vista/Interfaz | 0.25d | 2017-08-03 11:00 | 2017-08-03 13:00 | 102 | 2.5d |  |
| 104 | 2.6.3.6 | **2.6.3.6 Módulo de FAQ** | 0.5d | 2017-08-03 09:00 | 2017-08-03 13:00 |  |  |  |
| 105 |  | 2.6.3.6.1 Controlador | 0.25d | 2017-08-03 09:00 | 2017-08-03 11:00 |  | 2.25d |  |
| 106 |  | 2.6.3.6.2 Vista/Interfaz | 0.25d | 2017-08-03 11:00 | 2017-08-03 13:00 | 105 | 2.25d |  |
| 107 |  | 2.6.4 Hitos de codificación | 0.25d | 2017-08-03 15:00 | 2017-08-03 17:00 | 106 | 2.25d |  |
| 108 | 2.7 | **2.7 Pruebas** | 1d | 2017-08-08 09:00 | 2017-08-08 19:00 | 65 |  |  |
| 109 | 2.7.1 | **2.7.1 Caja blanca** | 1d | 2017-08-08 09:00 | 2017-08-08 19:00 |  |  |  |
| 110 | 2.7.1.1 | **2.7.1.1 Módulo de usuarios** | 0.2d | 2017-08-08 09:00 | 2017-08-08 10:36 |  |  |  |
| 111 |  | 2.7.1.1.1 Pruebas unitarias | 0.1d | 2017-08-08 09:00 | 2017-08-08 09:48 |  | 0.8d |  |
| 112 |  | 2.7.1.1.2 Pruebas de módulo | 0.1d | 2017-08-08 09:48 | 2017-08-08 10:36 | 111 | 0.8d |  |
| 113 | 2.7.1.2 | **2.7.1.2 Módulo de novedades** | 0.1d | 2017-08-08 09:00 | 2017-08-08 09:48 |  |  |  |
| 114 |  | 2.7.1.2.1 Pruebas unitarias | 0.05d | 2017-08-08 09:00 | 2017-08-08 09:24 |  | 0.9d |  |
| 115 |  | 2.7.1.2.2 Pruebas de módulo | 0.05d | 2017-08-08 09:24 | 2017-08-08 09:48 | 114 | 0.9d |  |
| 116 | 2.7.1.3 | **2.7.1.3 Módulo de productos** | 0.3d | 2017-08-08 09:00 | 2017-08-08 11:24 |  |  |  |
| 117 |  | 2.7.1.3.1 Pruebas unitarias | 0.15d | 2017-08-08 09:00 | 2017-08-08 10:12 |  | 0.7d |  |
| 118 |  | 2.7.1.3.2 Pruebas de moduo | 0.15d | 2017-08-08 10:12 | 2017-08-08 11:24 | 117 | 0.7d |  |
| 119 | 2.7.1.4 | **2.7.1.4 Módulo de compras** | 0.3d | 2017-08-08 09:00 | 2017-08-08 11:24 |  |  |  |
| 120 |  | 2.7.1.4.1 Pruebas unitarias | 0.15d | 2017-08-08 09:00 | 2017-08-08 10:12 |  | 0.6d |  |
| 121 |  | 2.7.1.4.2 Pruebas de módulo | 0.15d | 2017-08-08 10:12 | 2017-08-08 11:24 | 120 | 0.6d |  |
| 122 |  | 2.7.2 Hitos de pruebas | 0.1d | 2017-08-08 11:24 | 2017-08-08 12:12 | 121 | 0.6d |  |
| 123 | 2.8 | **2.8 Intregración** | 1d | 2017-08-09 09:00 | 2017-08-09 19:00 | 108 |  |  |
| 124 |  | 2.8.1 Pruebas de integración | 0.5d | 2017-08-09 09:00 | 2017-08-09 13:00 |  | 0d |  |
| 125 |  | 2.8.2 Hitos de Integración | 0.5d | 2017-08-09 15:00 | 2017-08-09 19:00 | 124 | 0d |  |
| 126 | 2.9 | **2.9 Implementación** | 1d | 2017-08-10 09:00 | 2017-08-10 19:00 | 123 |  |  |
| 127 |  | 2.9.1 Lista de hosting | 0.1d | 2017-08-10 09:00 | 2017-08-10 09:48 |  | 0d |  |
| 128 |  | 2.9.2 Evalucación de hosting | 0.1d | 2017-08-10 09:48 | 2017-08-10 10:36 | 127 | 0d |  |
| 129 |  | 2.9.3 Montar el sitio en el hosting | 0.3d | 2017-08-10 10:36 | 2017-08-10 13:00 | 128 | 0d |  |
| 130 |  | 2.9.4 Pruebas de sistema | 0.3d | 2017-08-10 15:00 | 2017-08-10 17:24 | 129 | 0d |  |
| 131 |  | 2.9.5 Hitos de la implementación | 0.2d | 2017-08-10 17:24 | 2017-08-10 19:00 | 130 | 0d |  |
| 132 | 2.10 | **2.10 Cierre del proyecto** | 1d | 2017-08-11 09:00 | 2017-08-11 19:00 | 126 |  |  |
| 133 |  | 2.10.1 Carta de aceptación | 0.1d | 2017-08-11 09:00 | 2017-08-11 09:48 |  | 0.2d |  |
| 134 |  | 2.10.2 Acta de cierre de proyecto | 0.1d | 2017-08-11 09:48 | 2017-08-11 10:36 | 133 | 0.2d |  |
| 135 |  | 2.10.3 Evaluación de desempeño | 0.3d | 2017-08-11 10:36 | 2017-08-11 13:00 | 134 | 0.2d |  |
| 136 |  | 2.10.4 Junta de lecciones aprendidas | 0.2d | 2017-08-11 15:00 | 2017-08-11 16:36 | 135 | 0.2d |  |
| 137 |  | 2.10.5 Revisión de adeherencias | 0.1d | 2017-08-11 16:36 | 2017-08-11 17:24 | 136 | 0.2d |  |
| 138 |  | 2.10.6 Liberación de recursos | 0.1d | 2017-08-11 09:00 | 2017-08-11 09:48 |  | 0.8d |  |
| 139 | 2.10.7 | **2.10.7 Informa final de (Cierre)** | 0.1d | 2017-08-11 09:48 | 2017-08-11 10:36 | 138 | 0.8d |  |
| 143 |  | 1 | 1d | 2017-05-26 09:00 | 2017-05-26 19:00 |  |  | start no earlier than 2017-05-26 09:00 |

| ID | Task | Duration | Start | Finish | Constraint |
| --- | --- | --- | --- | --- | --- |
| 144 | 2 | 1d | 2017-06-02 09:00 | 2017-06-02 19:00 | start no earlier than 2017-06-02 09:00 |
| 145 | 3 | 1d | 2017-06-09 09:00 | 2017-06-09 19:00 | start no earlier than 2017-06-09 09:00 |
| 146 | 4 | 1d | 2017-06-16 09:00 | 2017-06-16 19:00 | start no earlier than 2017-06-16 09:00 |
| 147 | 5 | 1d | 2017-06-23 09:00 | 2017-06-23 19:00 | start no earlier than 2017-06-23 09:00 |
| 148 | 6 | 1d | 2017-06-30 09:00 | 2017-06-30 19:00 | start no earlier than 2017-06-30 09:00 |
| 149 | 7 | 1d | 2017-07-07 09:00 | 2017-07-07 19:00 | start no earlier than 2017-07-07 09:00 |
| 150 | 8 | 1d | 2017-07-14 09:00 | 2017-07-14 19:00 | start no earlier than 2017-07-14 09:00 |
| 151 | 9 | 1d | 2017-07-21 09:00 | 2017-07-21 19:00 | start no earlier than 2017-07-21 09:00 |
| 152 | 10 | 1d | 2017-07-28 09:00 | 2017-07-28 19:00 | start no earlier than 2017-07-28 09:00 |
| 153 | 11 | 1d | 2017-08-04 09:00 | 2017-08-04 19:00 | start no earlier than 2017-08-04 09:00 |

## Version 2 (saved 2017-07-06)

Note of the change: WBS actualizado

Last finish stays 2017-08-11. Complete tasks 0 → 18.

Changed:

| ID | Task | Start | Finish | Complete | Total float | Other |
| --- | --- | --- | --- | --- | --- | --- |
| 1 | **1. Plan Preliminar** | 2017-05-08 09:00 A |  | 0% → 99% |  | resources none → PC Portátil Acer; PC portátil HP1 |
| 2 | 1.1 Generar un WBS del Producto Inicial | 2017-05-08 09:00 A | 2017-05-08 19:00 A | 0% → 100% | 0.3d → none |  |
| 3 | 1.2 Generar Project Charter | 2017-05-09 09:00 A | 2017-05-09 11:24 A | 0% → 100% | 0.3d → none |  |
| 4 | 1.3 Plan de Proyecto Preliminar | 2017-05-09 11:24 A | 2017-05-09 16:36 A | 0% → 100% | 0.3d → none |  |
| 5 | 1.4 Generar Matriz de Responsabilidades | 2017-05-09 09:00 A | 2017-05-09 11:24 A | 0% → 100% | 0.7d → none |  |
| 6 | **2. Sitio web ANKAR** | 2017-05-10 09:00 A |  | 0% → 20% |  | resources none → PC Portátil Acer; PC portátil HP1; PC portátil HP2 |
| 7 | 2.1 Formación del Equipo de Desarrollo | 2017-05-10 09:00 A | 2017-05-10 09:48 A | 0% → 100% | 54.9d → none |  |
| 8 | **2.2 Especificación de Requerimientos** | 2017-05-10 09:00 A |  | 0% → 72% |  |  |
| 9 | **2.2.1 Elicitación** | 2017-05-10 09:00 A |  | 0% → 83% |  |  |
| 10 | 2.2.1.1 Generar listas de proveedores | 2017-05-10 09:00 A |  | 0% → 50% | 3d → -7.4d |  |
| 11 | 2.2.1.2 Evaluar los proveedores de requerimientos a entrevistar | 2017-05-10 15:00 A |  | 0% → 50% | 3d → -7.65d |  |
| 12 | 2.2.1.3 Definir la estrategia de recolección de requerimientos | 2017-05-10 17:00 A | 2017-05-10 19:00 A | 0% → 100% | 3d → none |  |
| 13 | 2.2.1.4 Planificar reuniones de elicitación de requerimientos | 2017-05-11 09:00 A |  | 0% → 50% | 3d → -8.15d |  |
| 14 | 2.2.1.5 Identificar los procesos del sistema | 2017-05-11 11:00 A | 2017-05-12 11:00 A | 0% → 100% | 3d → none |  |
| 15 | 2.2.1.6 Identificar los requerimientos funcionales | 2017-05-12 11:00 A | 2017-05-12 17:00 A | 0% → 100% | 3d → none |  |
| 16 | 2.2.1.7 Indenticiar los requerimientos no funcionales | 2017-05-12 17:00 A | 2017-05-12 19:00 A | 0% → 100% | 3d → none |  |
| 17 | **2.2.2 Especificación** | 2017-05-16 09:00 A | 2017-05-16 19:00 A | 0% → 100% |  |  |
| 18 | 2.2.2.1 Describir los requerimientos | 2017-05-16 09:00 A | 2017-05-16 11:24 A | 0% → 100% | 3d → none |  |
| 19 | 2.2.2.2 Evaluar los requerimientos | 2017-05-16 11:24 A | 2017-05-16 15:48 A | 0% → 100% | 3d → none |  |
| 20 | 2.2.2.3 SRS | 2017-05-16 15:48 A | 2017-05-16 19:00 A | 0% → 100% | 3d → none |  |
| 21 | **2.2.3 Gestión** | 2017-05-17 09:00 A |  | 0% → 61% |  |  |
| 22 | 2.2.3.1 Prioizar requerimientos | 2017-05-17 09:00 A |  | 0% → 80% | 3d → -11.4d |  |
| 23 | 2.2.3.2 Almacenar en repositorio | 2017-05-17 15:00 A |  | 0% → 50% | 3d → -11.65d |  |
| 24 | 2.2.3.3 Asigar a desarrolladores de software | 2017-05-17 17:00 A | 2017-05-18 11:00 A | 0% → 100% | 3d → none |  |
| 25 | 2.2.3.4 Administrar los cambios en los requerimientos | 2017-05-18 11:00 A | 2017-05-18 17:00 A | 0% → 100% | 3d → none |  |
| 29 | **2.3 Planificación** | 2017-05-22 09:00 A |  | 0% → 70% |  |  |
| 30 | 2.3.1 Definición del ciclo de vida | 2017-05-22 09:00 A | 2017-05-22 11:00 A | 0% → 100% | 10.75d → none |  |
| 31 | 2.3.2 Politicas del proyecto | 2017-05-22 09:00 A |  | 0% → 60% |  |  |
| 32 | 2.3.3 Actualizar plan de proyecto | 2017-05-23 09:00 A |  | 0% → 80% |  |  |
| 33 | **2.3.4 Estimación** | 2017-05-25 09:00 A |  | 0% → 97% |  |  |
| 34 | 2.3.4.1 Actualizar WBS/Calendario | 2017-05-25 09:00 A |  | 0% → 95% | 6.75d → 2.5d |  |
| 35 | 2.3.4.2 Diccionario del WBS | 2017-05-25 09:00 A |  | 0% → 95% | 4.75d → 1.75d |  |
| 36 | 2.3.4.5 Costos | 2017-05-26 11:00 A | 2017-05-29 13:00 A | 0% → 100% | 4.75d → none |  |
| 37 | **2.3.5 Riesgos** | 2017-05-30 09:00 A |  | 0% → 98% |  |  |
| 38 | 2.3.5.1 Identificación de riesgos | 2017-05-30 09:00 A | 2017-05-30 17:00 A | 0% → 100% | 4.25d → none |  |
| 39 | 2.3.5.2 Asignación de prioridades | 2017-05-30 09:00 A | 2017-05-30 17:00 A | 0% → 100% | 4.25d → none |  |
| 40 | 2.3.5.3 Plan de mitigación y contingencia | 2017-05-31 09:00 A |  | 0% → 95% |  |  |
